# Stargazer

Schedule from MS Project, 2010-01-06 to 2010-04-07, 4 hours a day, A marks actual dates.
Okanagan College

## Calendars

- Standard: Mon 14:00-16:30; Tue off; Wed 14:30-16:30; Thu 14:30-18:30; Fri-Sun off. Exceptions (off unless hours are given): 2010-04-06 08:00-12:00, 13:00-17:00.

## Resources

| Resource |
| --- |
| Robert |
| Rob |

## Schedule

| ID | WBS | Task | Type | Duration | Start | Finish | Predecessors | Complete | Remaining | Total slack | Free slack | Constraint | Resources | Work | Actual work | Text1 |
| --- | --- | --- | --- | --- | --- | --- | --- | --- | --- | --- | --- | --- | --- | --- | --- | --- |
| 1 | 1 | **Iteration 5: Release #3** |  | 5.25d | 2010-01-06 14:30 A | 2010-01-21 16:30 |  | 63% | 1.92d | 12.75d | 0d |  |  | 29.75h | 17.4h | 16 |
| 2 | 1.1 | **Web system** |  | 4.75d | 2010-01-07 14:30 A | 2010-01-21 16:30 |  | 79% | 1d | 12.75d | 0d |  |  | 14.25h | 11.25h | 16 |
| 3 | 1.1.1 | Add new online help documentation to website |  | 3h | 2010-01-11 14:00 A | 2010-01-13 15:00 A |  | 100% |  |  |  | start no earlier than 2010-01-11 08:00 | Robert | 3h | 3h | 12 |
| 4 | 1.1.2 | Fix CSS with mobile devices |  | 15min | 2010-01-07 14:30 A | 2010-01-07 14:45 A |  | 100% |  |  |  | start no earlier than 2010-01-07 08:00 | Rob | 0.25h | 0.25h |  |
| 5 | 1.1.3 | Minor refactoring |  | 1.5h | 2010-01-07 14:30 A | 2010-01-07 16:00 A |  | 100% |  |  |  | start no earlier than 2010-01-07 08:00 | Rob | 1.5h | 1.5h |  |
| 6 | 1.1.4 | Research Rails plugin to handle scheduling |  | 2h | 2010-01-11 14:00 A | 2010-01-11 16:00 A |  | 100% |  |  |  | start no earlier than 2010-01-11 08:00 | Rob | 2h | 2h |  |
| 7 | 1.1.5 | Download and install Oracle 10g XE on telescope server |  | 1.5h | 2010-01-14 14:30 A | 2010-01-14 16:00 A | 6 | 100% |  |  |  | start no earlier than 2010-01-14 08:00 | Rob | 1.5h | 1.5h |  |
| 8 | 1.1.6 | Install Oracle client on web server |  | 1h | 2010-01-21 14:30 | 2010-01-21 15:30 |  |  |  | 13d |  | start no earlier than 2010-01-21 08:00 | Rob | 1h |  |  |
| 9 | 1.1.7 | Configure Rails environment to now use the Oracle 10g XE database |  | 1h | 2010-01-14 16:00 A | 2010-01-14 17:00 A | 7 | 100% |  |  |  | start no earlier than 2010-01-14 08:00 | Rob | 1h | 1h |  |
| 10 | 1.1.8 | Create triggers/batch file to run application |  | 2h | 2010-01-21 14:30 | 2010-01-21 16:30 | 11 |  |  | 12.75d |  | start no earlier than 2010-01-21 08:00 | Rob | 2h |  |  |
| 11 | 1.1.9 | Test connections and scheduling jobs |  | 2h | 2010-01-18 14:00 A | 2010-01-18 16:00 A | 9 | 100% |  |  |  | start no earlier than 2010-01-18 08:00 | Rob | 2h | 2h |  |
| 12 | 1.2 | **Telescope-controlling application** |  | 0.75d | 2010-01-14 14:30 A | 2010-01-14 17:30 |  | 67% | 0.25d | 14.62d | 1.88d |  |  | 3h | 2h | 16 |
| 13 | 1.2.1 | Allow for parking the telescope |  | 1h | 2010-01-14 14:30 | 2010-01-14 15:30 |  |  |  | 15.12d |  | start no earlier than 2010-01-14 08:00 | Robert | 1h |  |  |
| 14 | 1.2.2 | Allow for telescope movement ability from entered celestial coordinates |  | 2h | 2010-01-14 15:30 A | 2010-01-14 17:30 A | 13 | 100% |  |  |  | start no earlier than 2010-01-14 08:00 | Robert | 2h | 2h |  |
| 15 | 1.3 | **Documentation** |  | 3.88d | 2010-01-06 14:30 A | 2010-01-18 15:00 |  | 33% | 2.61d | 14.12d | 1.38d |  |  | 12.5h | 4.15h | 16 |
| 16 | 1.3.1 | Documentation updates |  | 5h | 2010-01-06 14:30 A | 2010-01-07 17:30 |  | 34% | 3.3h | 16.75d | 5.62d |  | Rob; Robert | 10h | 3.4h | 20 |
| 17 | 1.3.2 | Metrics gathering |  | 1.5h | 2010-01-06 14:30 A | 2010-01-06 16:00 |  | 50% | 0.75h | 17.62d |  |  | Rob | 1.5h | 0.75h |  |
| 18 | 1.3.3 | Draft acceptance test |  | 1h | 2010-01-18 14:00 | 2010-01-18 15:00 |  |  |  | 14.12d |  | start no earlier than 2010-01-18 08:00 | Rob | 1h |  |  |
| 19 | 1.4 | Release #3 | milestone | 0d | 2010-01-21 16:30 | 2010-01-21 16:30 | 2, 12, 15 |  |  | 12.75d |  | start no earlier than 2010-01-21 08:00 | Rob; Robert |  |  |  |
| 21 | 2 | **Iteration 6: Release #4** |  | 4.5d | 2010-01-21 16:30 | 2010-02-04 17:30 | 1 |  |  | 12.25d | 0d |  |  | 51h |  | 16 |
| 22 | 2.1 | **Web system** |  | 1.38d | 2010-01-25 14:00 | 2010-01-28 15:30 |  |  |  | 14.88d | 2.12d |  |  | 9h |  | 16 |
| 23 | 2.1.1 | Integrate libraries (which have celestial objects of interest) to web site |  | 5h | 2010-01-25 14:00 | 2010-01-28 15:00 |  |  |  | 15d |  | start no earlier than 2010-01-25 08:00 | Robert | 5h |  | 20 |
| 24 | 2.1.2 | Add pagination to tables (e.g. schedule log table) |  | 3h | 2010-01-25 14:00 | 2010-01-27 15:00 |  |  |  | 15.5d |  | start no earlier than 2010-01-25 08:00 | Rob | 3h |  | 12 |
| 25 | 2.1.3 | Changes to schedule log filtering for mobile device views |  | 1h | 2010-01-28 14:30 | 2010-01-28 15:30 |  |  |  | 14.88d |  | start no earlier than 2010-01-28 08:00 | Rob | 1h |  |  |

| ID | WBS | Task | Type | Duration | Start | Finish | Predecessors | Total slack | Free slack | Constraint | Resources | Work | Text1 |
| --- | --- | --- | --- | --- | --- | --- | --- | --- | --- | --- | --- | --- | --- |
| 26 | 2.2 | **Telescope-controlling application** |  | 1.12d | 2010-01-28 14:30 | 2010-02-01 14:30 |  | 14d | 1.25d |  |  | 4.5h | 16 |
| 27 | 2.2.1 | Integrate camera to telescope-controlling application |  | 4.5h | 2010-01-28 14:30 | 2010-02-01 14:30 |  | 14d | 1.25d | start no earlier than 2010-01-28 08:00 | Robert | 4.5h | 18 |
| 28 | 2.3 | **Documentation** |  | 4.5d | 2010-01-21 16:30 | 2010-02-04 17:30 |  | 12.25d | 0d |  |  | 37.5h | 16 |
| 29 | 2.3.1 | Update documentation |  | 16h | 2010-01-21 16:30 | 2010-02-04 15:30 |  | 12.75d |  |  | Rob; Robert | 32h | 64 |
| 30 | 2.3.2 | Create unit tests for telescope-controlling application |  | 2.5h | 2010-02-04 14:30 | 2010-02-04 17:00 | 12 | 12.38d |  | start no earlier than 2010-02-04 08:00 | Robert | 2.5h | 10 |
| 31 | 2.3.3 | Create class diagram for telescope-controlling application |  | 1h | 2010-02-04 14:30 | 2010-02-04 15:30 | 16 | 12.25d | 0d | start no earlier than 2010-02-04 08:00 | Robert | 1h |  |
| 32 | 2.3.4 | Create sequence diagrams for telescope-controlling application |  | 2h | 2010-02-04 15:30 | 2010-02-04 17:30 | 31 | 12.25d |  | start no earlier than 2010-01-21 08:00 | Robert | 2h |  |
| 33 | 2.4 | Release #4 | milestone | 0d | 2010-02-04 17:30 | 2010-02-04 17:30 | 22, 26, 28 | 12.25d |  | start no earlier than 2010-02-04 08:00 | Rob; Robert |  |  |
| 35 | 3 | **Iteration 7: Release #5** |  | 3.5d | 2010-02-04 17:30 | 2010-02-18 08:00 | 21 | 10.25d | 0d |  |  | 27.5h | 16 |
| 36 | 3.1 | **Web system** |  | 1d | 2010-02-04 17:30 | 2010-02-10 15:00 |  | 12.75d |  |  |  | 7h | 16 |
| 37 | 3.1.1 | Implement mail server/mailing system |  | 4h | 2010-02-04 17:30 | 2010-02-10 15:00 |  | 12.75d |  |  | Rob | 4h | 16 |
| 38 | 3.1.2 | Fix functional tests |  | 3h | 2010-02-04 17:30 | 2010-02-08 16:00 |  | 13d |  | start no earlier than 2010-01-07 08:00 | Rob | 3h | 12 |
| 39 | 3.2 | **Telescope-controlling application** |  | 1.5d | 2010-02-04 17:30 | 2010-02-11 15:00 |  | 12.25d |  |  |  | 10.5h | 16 |
| 40 | 3.2.1 | Implement functionality for compiling composite images |  | 4.5h | 2010-02-04 17:30 | 2010-02-10 15:30 | 27 | 12.62d |  |  | Robert | 4.5h | 18 |
| 41 | 3.2.2 | Implement ability for streaming images live to the web system |  | 6h | 2010-02-04 17:30 | 2010-02-11 15:00 | 27 | 12.25d | 2d |  | Rob | 6h | 24 |
| 42 | 3.3 | **Documentation** |  | 3.5d | 2010-02-04 17:30 | 2010-02-18 08:00 |  | 10.25d |  |  |  | 10h | 16 |
| 43 | 3.3.1 | Update documentation |  | 4h | 2010-02-04 17:30 | 2010-02-10 15:00 |  | 12.75d |  |  | Rob; Robert | 8h | 16 |
| 44 | 3.3.2 | Create sequence diagrams for web application |  | 2h | 2010-02-04 17:30 | 2010-02-08 15:00 |  | 13.25d |  |  | Robert | 2h |  |
| 45 | 3.3.3 | Release #5 | milestone | 0d | 2010-02-18 08:00 | 2010-02-18 08:00 |  | 10.25d |  | start no earlier than 2010-02-18 08:00 | Rob; Robert |  |  |
| 47 | 4 | **Iteration 8: Release #6** |  | 4.25d | 2010-02-18 14:30 | 2010-03-04 08:00 | 35 | 8.25d | 0d |  |  | 23.5h | 16 |
| 48 | 4.1 | **Web system** |  | 0.88d | 2010-02-18 14:30 | 2010-02-18 18:00 |  | 11.62d | 3.38d |  |  | 3.5h | 16 |
| 49 | 4.1.1 | Implement manual telescope positioning |  | 3.5h | 2010-02-18 14:30 | 2010-02-18 18:00 | 41 | 11.62d |  |  | Rob | 3.5h | 14 |
| 50 | 4.2 | **Telescope-controlling application** |  | 2.25d | 2010-02-18 14:30 | 2010-02-25 15:00 |  | 10.25d | 2d |  |  | 12h | 16 |
| 51 | 4.2.1 | Research image recognition options |  | 3h | 2010-02-18 14:30 | 2010-02-18 17:30 |  | 10.25d | 0d |  | Rob; Robert | 6h | 12 |
| 52 | 4.2.2 | Implement functionality for image recognition |  | 6h | 2010-02-18 17:30 | 2010-02-25 15:00 | 51 | 10.25d |  |  | Robert | 6h | 24 |

| ID | WBS | Task | Type | Duration | Start | Finish | Predecessors | Total slack | Free slack | Constraint | Resources | Work | Text1 |
| --- | --- | --- | --- | --- | --- | --- | --- | --- | --- | --- | --- | --- | --- |
| 53 | 4.3 | **Documentation** |  | 1d | 2010-02-18 14:30 | 2010-02-18 18:30 |  | 11.5d | 3.25d |  |  | 8h | 16 |
| 54 | 4.3.1 | Update documentation |  | 4h | 2010-02-18 14:30 | 2010-02-18 18:30 |  | 11.5d |  |  | Rob; Robert | 8h | 16 |
| 55 | 4.4 | Release #6 | milestone | 0d | 2010-03-04 08:00 | 2010-03-04 08:00 | 48, 50, 53 | 8.25d |  | start no earlier than 2010-03-04 08:00 | Rob; Robert |  |  |
| 57 | 5 | **Iteration 9: Release #7** |  | 12.12d | 2010-03-04 14:30 | 2010-04-07 08:00 | 47 | 0d |  |  |  | 31h | 16 |
| 58 | 5.1 | Final refactoring |  | 5h | 2010-03-04 14:30 | 2010-03-08 15:00 |  | 8.25d | 0d |  | Rob; Robert | 10h | 20 |
| 59 | 5.2 | **Deployment** |  | 0.25d | 2010-03-08 15:00 | 2010-03-08 16:00 | 58 | 8.25d | 0d |  |  | 1h | 16 |
| 60 | 5.2.1 | Deploy systems to production environment |  | 1h | 2010-03-08 15:00 | 2010-03-08 16:00 |  | 8.25d |  |  | Rob | 1h |  |
| 61 | 5.3 | **Documentation** |  | 1.75d | 2010-03-08 16:00 | 2010-03-15 14:30 | 59 | 8.25d | 0d |  |  | 13h | 16 |
| 62 | 5.3.1 | Finalize documentation |  | 6h | 2010-03-08 16:00 | 2010-03-11 18:00 |  | 8.25d | 0d |  | Rob; Robert | 12h | 24 |
| 63 | 5.3.2 | Compile final metrics and project statistics |  | 1h | 2010-03-11 18:00 | 2010-03-15 14:30 | 62 | 8.25d |  |  | Robert | 1h |  |
| 64 | 5.4 | Final user acceptance test |  | 1h | 2010-03-04 14:30 | 2010-03-04 15:30 |  | 11.88d |  |  | Rob; Robert | 2h |  |
| 65 | 5.5 | **Final Presentation** |  | 8.88d | 2010-03-15 14:30 | 2010-04-07 08:00 | 61 | 0d |  |  |  | 5h | 16 |
| 66 | 5.5.1 | Create PowerPoint for final presentation |  | 2.5h | 2010-03-15 14:30 | 2010-03-17 15:00 |  | 8.25d |  |  | Rob; Robert | 5h | 10 |
| 67 | 5.5.2 | Present project to OC faculty and audience | milestone | 0d | 2010-04-07 08:00 | 2010-04-07 08:00 | 66 | 0d |  | start no earlier than 2010-04-07 08:00 | Rob; Robert |  |  |
| 68 | 5.6 | Final release | milestone | 0d | 2010-04-07 08:00 | 2010-04-07 08:00 | 65, 59, 61 | 0d |  | start no earlier than 2010-03-18 08:00 | Rob; Robert |  |  |
